| crew | duration | ef | endDate | es | id | isMilestone | lf | ls | name | phase | startDate | totalFloat | trade | packageCode |
| --- | --- | --- | --- | --- | --- | --- | --- | --- | --- | --- | --- | --- | --- | --- |
| computed withheld from client view 0 | input Emirates PERT Schedule.pdf · row 1 (project start 2025-06-23) 0 | 0 | 2025-06-23 | 0 | e0 | True | 0 | 0 | Project start | Construction | 2025-06-23 | 0 | general |  |
| computed withheld from client view 0 | input Emirates PERT Schedule.pdf · row 131 (Duration) 7 | 0 | 2025-07-26 | 0 | e131 |  | 0 | 0 | Mobilisation Period | Construction | 2025-07-20 | 0 | general | J |
| computed withheld from client view 0 | input Emirates PERT Schedule.pdf · row 134 (Duration) 4 | 0 | 2025-09-29 | 0 | e134 |  | 0 | 0 | Waterproofing | Construction | 2025-09-26 | 0 | civil | A |
| computed withheld from client view 0 | input Emirates PERT Schedule.pdf · row 135 (Duration) 1 | 0 | 2025-09-27 | 0 | e135 |  | 0 | 0 | Pest Control | Construction | 2025-09-27 | 0 | cleaning | J |
| computed withheld from client view 0 | input Emirates PERT Schedule.pdf · row 136 (Duration) 7 | 0 | 2025-10-06 | 0 | e136 |  | 0 | 0 | Self Leveling | Construction | 2025-09-30 | 0 | civil | A |
| computed withheld from client view 0 | input Emirates PERT Schedule.pdf · row 141 (Duration) 5 | 0 | 2025-10-06 | 0 | e141 |  | 0 | 0 | Blockwork/RCC Lintel | Construction | 2025-10-02 | 0 | civil | A |
| computed withheld from client view 0 | input Emirates PERT Schedule.pdf · row 142 (Duration) 5 | 0 | 2025-10-11 | 0 | e142 |  | 0 | 0 | Plastering | Construction | 2025-10-07 | 0 | civil | A |
| computed withheld from client view 0 | input Emirates PERT Schedule.pdf · row 143 (Duration) 6 | 0 | 2025-10-12 | 0 | e143 |  | 0 | 0 | POP Punning | Construction | 2025-10-07 | 0 | general | J |
| computed withheld from client view 0 | input Emirates PERT Schedule.pdf · row 137 (Duration) 10 | 0 | 2025-10-21 | 0 | e137 |  | 0 | 0 | PCC | Construction | 2025-10-12 | 0 | civil | A |
| computed withheld from client view 0 | input Emirates PERT Schedule.pdf · row 138 (Duration) 7 | 0 | 2025-10-30 | 0 | e138 |  | 0 | 0 | Modifoam Flooring | Construction | 2025-10-24 | 0 | flooring | A |
| computed withheld from client view 0 | input Emirates PERT Schedule.pdf · row 139 (Duration) 2 | 0 | 2025-10-25 | 0 | e139 |  | 0 | 0 | Line out Marking | Construction | 2025-10-24 | 0 | general | J |
| computed withheld from client view 0 | input Emirates PERT Schedule.pdf · row 140 (Duration) 1 | 0 | 2025-10-26 | 0 | e140 |  | 0 | 0 | Line out Checking & Approval | Construction | 2025-10-26 | 0 | general | J |
| computed withheld from client view 0 | input Emirates PERT Schedule.pdf · row 144 (Duration) 10 | 0 | 2025-12-12 | 0 | e144 |  | 0 | 0 | Engineered Concrete Flooring | Construction | 2025-12-03 | 0 | flooring | A |
| computed withheld from client view 0 | input Emirates PERT Schedule.pdf · row 146 (Duration) 12 | 0 | 2025-10-14 | 0 | e146 |  | 0 | 0 | GI Framing Works | Construction | 2025-10-03 | 0 | general | J |
| computed withheld from client view 0 | input Emirates PERT Schedule.pdf · row 147 (Duration) 9 | 0 | 2025-10-18 | 0 | e147 |  | 0 | 0 | Single side single skinning | Construction | 2025-10-10 | 0 | partition | A |
| computed withheld from client view 0 | input Emirates PERT Schedule.pdf · row 149 (Duration) 5 | 0 | 2025-10-19 | 0 | e149 |  | 0 | 0 | Insulation works | Construction | 2025-10-15 | 0 | general | J |
| computed withheld from client view 0 | input Emirates PERT Schedule.pdf · row 148 (Duration) 3 | 0 | 2025-10-18 | 0 | e148 |  | 0 | 0 | Clearance from Services | Construction | 2025-10-16 | 0 | general | J |
| computed withheld from client view 0 | input Emirates PERT Schedule.pdf · row 150 (Duration) 10 | 0 | 2025-10-27 | 0 | e150 |  | 0 | 0 | Second side single skinning | Construction | 2025-10-18 | 0 | partition | A |
| computed withheld from client view 0 | input Emirates PERT Schedule.pdf · row 152 (Duration) 20 | 0 | 2025-12-01 | 0 | e152 |  | 0 | 0 | Delivery of Modular Glazed Partitions glass | Construction | 2025-11-12 | 0 | partition | A |
| computed withheld from client view 0 | input Emirates PERT Schedule.pdf · row 153 (Duration) 10 | 0 | 2025-12-11 | 0 | e153 |  | 0 | 0 | Installation of glass partitions frames | Construction | 2025-12-02 | 0 | partition | A |
| computed withheld from client view 0 | input Emirates PERT Schedule.pdf · row 154 (Duration) 15 | 0 | 2025-12-26 | 0 | e154 |  | 0 | 0 | Installation of glass for glazed partitions | Construction | 2025-12-12 | 0 | partition | A |
| computed withheld from client view 0 | input Emirates PERT Schedule.pdf · row 159 (Duration) 15 | 0 | 2026-01-06 | 0 | e159 |  | 0 | 0 | Sliding Folding Partition | Construction | 2025-12-23 | 0 | partition | A |
| computed withheld from client view 0 | input Emirates PERT Schedule.pdf · row 155 (Duration) 15 | 0 | 2026-01-15 | 0 | e155 |  | 0 | 0 | Installation of curved glass partition | Construction | 2026-01-01 | 0 | partition | A |
| computed withheld from client view 0 | input Emirates PERT Schedule.pdf · row 156 (Duration) 7 | 0 | 2026-01-07 | 0 | e156 |  | 0 | 0 | Installation of solid flush doors | Construction | 2026-01-01 | 0 | carpentry | A |
| computed withheld from client view 0 | input Emirates PERT Schedule.pdf · row 157 (Duration) 7 | 0 | 2026-01-07 | 0 | e157 |  | 0 | 0 | Delivery of Fire Rated Metal Doors | Construction | 2026-01-01 | 0 | carpentry | A |
| computed withheld from client view 0 | input Emirates PERT Schedule.pdf · row 160 (Duration) 15 | 0 | 2026-01-21 | 0 | e160 |  | 0 | 0 | Switchable smart glass | Construction | 2026-01-07 | 0 | glass | A |
| computed withheld from client view 0 | input Emirates PERT Schedule.pdf · row 158 (Duration) 15 | 0 | 2026-01-22 | 0 | e158 |  | 0 | 0 | Installation of Fire Rated Metal Doors | Construction | 2026-01-08 | 0 | carpentry | A |
| computed withheld from client view 0 | input Emirates PERT Schedule.pdf · row 162 (Duration) 2 | 0 | 2025-11-05 | 0 | e162 |  | 0 | 0 | Delivery of Raised Flooring | Construction | 2025-11-04 | 0 | flooring | A |
| computed withheld from client view 0 | input Emirates PERT Schedule.pdf · row 163 (Duration) 3 | 0 | 2025-11-10 | 0 | e163 |  | 0 | 0 | Marking of Raised Access Flooring | Construction | 2025-11-08 | 0 | flooring | A |
| computed withheld from client view 0 | input Emirates PERT Schedule.pdf · row 164 (Duration) 5 | 0 | 2025-11-15 | 0 | e164 |  | 0 | 0 | Fixing of Pedestals | Construction | 2025-11-11 | 0 | general | J |
| computed withheld from client view 0 | input Emirates PERT Schedule.pdf · row 165 (Duration) 7 | 0 | 2025-11-19 | 0 | e165 |  | 0 | 0 | Fixing of Raised Flooring Tiles | Construction | 2025-11-13 | 0 | flooring | A |
| computed withheld from client view 0 | input Emirates PERT Schedule.pdf · row 166 (Duration) 4 | 0 | 2025-11-24 | 0 | e166 |  | 0 | 0 | Cutout for power/data entrys | Construction | 2025-11-21 | 0 | lv | F |
| computed withheld from client view 0 | input Emirates PERT Schedule.pdf · row 167 (Duration) 5 | 0 | 2025-11-27 | 0 | e167 |  | 0 | 0 | Alignment of Raised Access Flooring | Construction | 2025-11-23 | 0 | flooring | A |
| computed withheld from client view 0 | input Emirates PERT Schedule.pdf · row 169 (Duration) 25 | 0 | 2025-11-21 | 0 | e169 |  | 0 | 0 | Vitrified Tiling | Construction | 2025-10-28 | 0 | flooring | A |
| computed withheld from client view 0 | input Emirates PERT Schedule.pdf · row 173 (Duration) 110 | 0 | 2026-02-14 | 0 | e173 |  | 0 | 0 | Protection Covering | Construction | 2025-10-28 | 0 | general | J |
| computed withheld from client view 0 | input Emirates PERT Schedule.pdf · row 170 (Duration) 20 | 0 | 2025-11-21 | 0 | e170 |  | 0 | 0 | Marble Flooring | Construction | 2025-11-02 | 0 | flooring | A |
| computed withheld from client view 0 | input Emirates PERT Schedule.pdf · row 171 (Duration) 10 | 0 | 2025-12-01 | 0 | e171 |  | 0 | 0 | Stone flooring | Construction | 2025-11-22 | 0 | flooring | A |
| computed withheld from client view 0 | input Emirates PERT Schedule.pdf · row 172 (Duration) 15 | 0 | 2026-02-08 | 0 | e172 |  | 0 | 0 | Carpet Installation | Construction | 2026-01-25 | 0 | flooring | A |
| computed withheld from client view 0 | input Emirates PERT Schedule.pdf · row 174 (Duration) 10 | 0 | 2026-02-03 | 0 | e174 |  | 0 | 0 | Wooden raised flooring Installation | Construction | 2026-01-25 | 0 | flooring | A |
| computed withheld from client view 0 | input Emirates PERT Schedule.pdf · row 175 (Duration) 7 | 0 | 2026-01-31 | 0 | e175 |  | 0 | 0 | Epoxy Flooring | Construction | 2026-01-25 | 0 | flooring | A |
| computed withheld from client view 0 | input Emirates PERT Schedule.pdf · row 177 (Duration) 10 | 0 | 2025-11-23 | 0 | e177 |  | 0 | 0 | GI Framing for gypsum ceiling | Construction | 2025-11-14 | 0 | ceiling | A |
| computed withheld from client view 0 | input Emirates PERT Schedule.pdf · row 178 (Duration) 15 | 0 | 2025-12-09 | 0 | e178 |  | 0 | 0 | Gypsum boarding & joint finishing | Construction | 2025-11-25 | 0 | partition | A |
| computed withheld from client view 0 | input Emirates PERT Schedule.pdf · row 179 (Duration) 20 | 0 | 2025-12-14 | 0 | e179 |  | 0 | 0 | Cafeteria Decorative Ceiling | Construction | 2025-11-25 | 0 | ceiling | A |
| computed withheld from client view 0 | input Emirates PERT Schedule.pdf · row 180 (Duration) 15 | 0 | 2025-12-14 | 0 | e180 |  | 0 | 0 | Metal Fabricated Ceiling | Construction | 2025-11-30 | 0 | ceiling | A |
| computed withheld from client view 0 | input Emirates PERT Schedule.pdf · row 181 (Duration) 15 | 0 | 2025-12-14 | 0 | e181 |  | 0 | 0 | Designer Ceiling | Construction | 2025-11-30 | 0 | ceiling | A |
| computed withheld from client view 0 | input Emirates PERT Schedule.pdf · row 183 (Duration) 4 | 0 | 2025-11-17 | 0 | e183 |  | 0 | 0 | Delivery of Grid Tiles and frames | Construction | 2025-11-14 | 0 | general | J |
| computed withheld from client view 0 | input Emirates PERT Schedule.pdf · row 184 (Duration) 10 | 0 | 2025-12-04 | 0 | e184 |  | 0 | 0 | Framing for Grid Tile installation | Construction | 2025-11-25 | 0 | general | J |
| computed withheld from client view 0 | input Emirates PERT Schedule.pdf · row 185 (Duration) 7 | 0 | 2025-12-11 | 0 | e185 |  | 0 | 0 | Installation of Grid Tiles | Construction | 2025-12-05 | 0 | general | J |
| computed withheld from client view 0 | input Emirates PERT Schedule.pdf · row 187 (Duration) 4 | 0 | 2025-11-17 | 0 | e187 |  | 0 | 0 | Delivery of Tiles and frames | Construction | 2025-11-14 | 0 | general | J |
| computed withheld from client view 0 | input Emirates PERT Schedule.pdf · row 188 (Duration) 10 | 0 | 2025-11-27 | 0 | e188 |  | 0 | 0 | Framing for Tile installation | Construction | 2025-11-18 | 0 | general | J |
| computed withheld from client view 0 | input Emirates PERT Schedule.pdf · row 189 (Duration) 5 | 0 | 2025-12-02 | 0 | e189 |  | 0 | 0 | Installation of technogrid Tiles | Construction | 2025-11-28 | 0 | general | J |
| computed withheld from client view 0 | input Emirates PERT Schedule.pdf · row 191 (Duration) 10 | 0 | 2025-11-29 | 0 | e191 |  | 0 | 0 | Ply Framing for stretch ceiling installation | Construction | 2025-11-20 | 0 | ceiling | A |
| computed withheld from client view 0 | input Emirates PERT Schedule.pdf · row 192 (Duration) 7 | 0 | 2026-01-06 | 0 | e192 |  | 0 | 0 | Delivery of stretch ceiling material on site | Construction | 2025-12-31 | 0 | ceiling | A |
| computed withheld from client view 0 | input Emirates PERT Schedule.pdf · row 193 (Duration) 5 | 0 | 2026-01-19 | 0 | e193 |  | 0 | 0 | Installation of Stretch Ceiling | Construction | 2026-01-15 | 0 | ceiling | A |
| computed withheld from client view 0 | input Emirates PERT Schedule.pdf · row 196 (Duration) 10 | 0 | 2025-11-16 | 0 | e196 |  | 0 | 0 | Putty application (walls) | Construction | 2025-11-07 | 0 | painting | A |
| computed withheld from client view 0 | input Emirates PERT Schedule.pdf · row 197 (Duration) 10 | 0 | 2025-11-26 | 0 | e197 |  | 0 | 0 | Primer application & sanding works (walls) | Construction | 2025-11-17 | 0 | painting | A |
| computed withheld from client view 0 | input Emirates PERT Schedule.pdf · row 198 (Duration) 12 | 0 | 2025-12-12 | 0 | e198 |  | 0 | 0 | 1st coat paint (walls) | Construction | 2025-12-01 | 0 | painting | A |
| computed withheld from client view 0 | input Emirates PERT Schedule.pdf · row 199 (Duration) 10 | 0 | 2025-12-22 | 0 | e199 |  | 0 | 0 | 2nd & 3rd coat paint (walls) | Construction | 2025-12-13 | 0 | painting | A |
| computed withheld from client view 0 | input Emirates PERT Schedule.pdf · row 200 (Duration) 20 | 0 | 2026-01-11 | 0 | e200 |  | 0 | 0 | Epoxy Paint | Construction | 2025-12-23 | 0 | flooring | A |
| computed withheld from client view 0 | input Emirates PERT Schedule.pdf · row 202 (Duration) 10 | 0 | 2025-12-23 | 0 | e202 |  | 0 | 0 | Putty application (ceiling) | Construction | 2025-12-14 | 0 | ceiling | A |
| computed withheld from client view 0 | input Emirates PERT Schedule.pdf · row 203 (Duration) 10 | 0 | 2026-01-02 | 0 | e203 |  | 0 | 0 | Primer application & sanding works (ceiling) | Construction | 2025-12-24 | 0 | ceiling | A |
| computed withheld from client view 0 | input Emirates PERT Schedule.pdf · row 204 (Duration) 12 | 0 | 2026-01-14 | 0 | e204 |  | 0 | 0 | 1st coat paint (ceiling) | Construction | 2026-01-03 | 0 | ceiling | A |
| computed withheld from client view 0 | input Emirates PERT Schedule.pdf · row 205 (Duration) 10 | 0 | 2026-01-24 | 0 | e205 |  | 0 | 0 | 2nd & 3rd coat paint (ceiling) | Construction | 2026-01-15 | 0 | ceiling | A |
| computed withheld from client view 0 | input Emirates PERT Schedule.pdf · row 207 (Duration) 10 | 0 | 2026-01-12 | 0 | e207 |  | 0 | 0 | Putty application (metallic) | Construction | 2026-01-03 | 0 | painting | A |
| computed withheld from client view 0 | input Emirates PERT Schedule.pdf · row 208 (Duration) 10 | 0 | 2026-01-22 | 0 | e208 |  | 0 | 0 | Primer application & sanding works (metallic) | Construction | 2026-01-13 | 0 | painting | A |
| computed withheld from client view 0 | input Emirates PERT Schedule.pdf · row 209 (Duration) 12 | 0 | 2026-02-03 | 0 | e209 |  | 0 | 0 | 1st coat paint (metallic) | Construction | 2026-01-23 | 0 | painting | A |
| computed withheld from client view 0 | input Emirates PERT Schedule.pdf · row 210 (Duration) 10 | 0 | 2026-02-13 | 0 | e210 |  | 0 | 0 | 2nd & 3rd coat paint (metallic) | Construction | 2026-02-04 | 0 | painting | A |
| computed withheld from client view 0 | input Emirates PERT Schedule.pdf · row 212 (Duration) 10 | 0 | 2026-01-12 | 0 | e212 |  | 0 | 0 | Putty application (stucco) | Construction | 2026-01-03 | 0 | painting | A |
| computed withheld from client view 0 | input Emirates PERT Schedule.pdf · row 213 (Duration) 10 | 0 | 2026-01-22 | 0 | e213 |  | 0 | 0 | Primer application & sanding works (stucco) | Construction | 2026-01-13 | 0 | painting | A |
| computed withheld from client view 0 | input Emirates PERT Schedule.pdf · row 214 (Duration) 12 | 0 | 2026-02-03 | 0 | e214 |  | 0 | 0 | 1st coat paint (stucco) | Construction | 2026-01-23 | 0 | painting | A |

| crew | duration | ef | endDate | es | id | lf | ls | name | phase | startDate | totalFloat | trade | packageCode |
| --- | --- | --- | --- | --- | --- | --- | --- | --- | --- | --- | --- | --- | --- |
| computed withheld from client view 0 | input Emirates PERT Schedule.pdf · row 215 (Duration) 10 | 0 | 2026-02-13 | 0 | e215 | 0 | 0 | 2nd & 3rd coat paint (stucco) | Construction | 2026-02-04 | 0 | painting | A |
| computed withheld from client view 0 | input Emirates PERT Schedule.pdf · row 216 (Duration) 7 | 0 | 2025-11-21 | 0 | e216 | 0 | 0 | Wall paper base preparation | Construction | 2025-11-15 | 0 | general | J |
| computed withheld from client view 0 | input Emirates PERT Schedule.pdf · row 218 (Duration) 30 | 0 | 2025-11-13 | 0 | e218 | 0 | 0 | Reception Table | Construction | 2025-10-15 | 0 | carpentry | A |
| computed withheld from client view 0 | input Emirates PERT Schedule.pdf · row 219 (Duration) 30 | 0 | 2025-12-13 | 0 | e219 | 0 | 0 | CCM Cabin Table | Construction | 2025-11-14 | 0 | carpentry | A |
| computed withheld from client view 0 | input Emirates PERT Schedule.pdf · row 220 (Duration) 30 | 0 | 2026-01-12 | 0 | e220 | 0 | 0 | Board Room Table | Construction | 2025-12-14 | 0 | carpentry | A |
| computed withheld from client view 0 | input Emirates PERT Schedule.pdf · row 225 (Duration) 40 | 0 | 2026-01-22 | 0 | e225 | 0 | 0 | Built-In Furniture Installation | Construction | 2025-12-14 | 0 | carpentry | A |
| computed withheld from client view 0 | input Emirates PERT Schedule.pdf · row 223 (Duration) 15 | 0 | 2026-01-12 | 0 | e223 | 0 | 0 | Acrylic Designer wall work | Construction | 2025-12-29 | 0 | general | J |
| computed withheld from client view 0 | input Emirates PERT Schedule.pdf · row 221 (Duration) 10 | 0 | 2026-01-12 | 0 | e221 | 0 | 0 | Service Counter | Construction | 2026-01-03 | 0 | carpentry | A |
| computed withheld from client view 0 | input Emirates PERT Schedule.pdf · row 222 (Duration) 10 | 0 | 2026-01-12 | 0 | e222 | 0 | 0 | Ledge Seating | Construction | 2026-01-03 | 0 | carpentry | A |
| computed withheld from client view 0 | input Emirates PERT Schedule.pdf · row 224 (Duration) 10 | 0 | 2026-01-29 | 0 | e224 | 0 | 0 | Pelmet Installation | Construction | 2026-01-20 | 0 | carpentry | A |
| computed withheld from client view 0 | input Emirates PERT Schedule.pdf · row 226 (Duration) 7 | 0 | 2026-01-26 | 0 | e226 | 0 | 0 | Blinds Installation | Construction | 2026-01-20 | 0 | general | J |
| computed withheld from client view 0 | input Emirates PERT Schedule.pdf · row 227 (Duration) 10 | 0 | 2026-01-29 | 0 | e227 | 0 | 0 | Skirting Installation | Construction | 2026-01-20 | 0 | carpentry | A |
| computed withheld from client view 0 | input Emirates PERT Schedule.pdf · row 228 (Duration) 7 | 0 | 2026-01-29 | 0 | e228 | 0 | 0 | Corner Guard Installation | Construction | 2026-01-23 | 0 | general | J |
| computed withheld from client view 0 | input Emirates PERT Schedule.pdf · row 229 (Duration) 4 | 0 | 2026-01-29 | 0 | e229 | 0 | 0 | Transition Profile Installation | Construction | 2026-01-26 | 0 | general | J |
| computed withheld from client view 0 | input Emirates PERT Schedule.pdf · row 231 (Duration) 14 | 0 | 2025-11-12 | 0 | e231 | 0 | 0 | Dado Installation | Construction | 2025-10-30 | 0 | general | J |
| computed withheld from client view 0 | input Emirates PERT Schedule.pdf · row 235 (Duration) 14 | 0 | 2026-01-26 | 0 | e235 | 0 | 0 | Vertical Garden/Planters | Construction | 2026-01-13 | 0 | general | J |
| computed withheld from client view 0 | input Emirates PERT Schedule.pdf · row 236 (Duration) 14 | 0 | 2026-01-26 | 0 | e236 | 0 | 0 | Fluted Panel installation | Construction | 2026-01-13 | 0 | general | J |
| computed withheld from client view 0 | input Emirates PERT Schedule.pdf · row 233 (Duration) 20 | 0 | 2026-02-09 | 0 | e233 | 0 | 0 | Lacquered Glass Panelling | Construction | 2026-01-21 | 0 | partition | A |
| computed withheld from client view 0 | input Emirates PERT Schedule.pdf · row 232 (Duration) 15 | 0 | 2026-02-09 | 0 | e232 | 0 | 0 | Wallpaper Installation | Construction | 2026-01-26 | 0 | general | J |
| computed withheld from client view 0 | input Emirates PERT Schedule.pdf · row 234 (Duration) 10 | 0 | 2026-02-09 | 0 | e234 | 0 | 0 | Glass Film Installation | Construction | 2026-01-31 | 0 | glass | A |
| computed withheld from client view 0 | input Emirates PERT Schedule.pdf · row 238 (Duration) 1 | 0 | 2025-10-14 | 0 | e238 | 0 | 0 | Marking of plumbing lines | Construction | 2025-10-14 | 0 | plumbing | E |
| computed withheld from client view 0 | input Emirates PERT Schedule.pdf · row 239 (Duration) 5 | 0 | 2025-10-19 | 0 | e239 | 0 | 0 | Waterproofing (PHE) | Construction | 2025-10-15 | 0 | civil | A |
| computed withheld from client view 0 | input Emirates PERT Schedule.pdf · row 240 (Duration) 7 | 0 | 2025-10-26 | 0 | e240 | 0 | 0 | BBC | Construction | 2025-10-20 | 0 | general | J |
| computed withheld from client view 0 | input Emirates PERT Schedule.pdf · row 242 (Duration) 7 | 0 | 2025-10-21 | 0 | e242 | 0 | 0 | Pipes Installation (supply) | Construction | 2025-10-15 | 0 | general | J |
| computed withheld from client view 0 | input Emirates PERT Schedule.pdf · row 243 (Duration) 6 | 0 | 2025-10-27 | 0 | e243 | 0 | 0 | Fittings Installation (supply) | Construction | 2025-10-22 | 0 | general | J |
| computed withheld from client view 0 | input Emirates PERT Schedule.pdf · row 245 (Duration) 10 | 0 | 2025-10-24 | 0 | e245 | 0 | 0 | Pipes Installation (drainage) | Construction | 2025-10-15 | 0 | plumbing | E |
| computed withheld from client view 0 | input Emirates PERT Schedule.pdf · row 246 (Duration) 7 | 0 | 2025-10-31 | 0 | e246 | 0 | 0 | Fittings Installation (drainage) | Construction | 2025-10-25 | 0 | plumbing | E |
| computed withheld from client view 0 | input Emirates PERT Schedule.pdf · row 247 (Duration) 7 | 0 | 2025-11-07 | 0 | e247 | 0 | 0 | Pumps Installation | Construction | 2025-11-01 | 0 | plumbing | E |
| computed withheld from client view 0 | input Emirates PERT Schedule.pdf · row 248 (Duration) 10 | 0 | 2025-11-17 | 0 | e248 | 0 | 0 | Sanitary Fixtures Installation | Construction | 2025-11-08 | 0 | plumbing | E |
| computed withheld from client view 0 | input Emirates PERT Schedule.pdf · row 249 (Duration) 2 | 0 | 2025-11-19 | 0 | e249 | 0 | 0 | Testing & Commissioning of Plumbing Line | Construction | 2025-11-18 | 0 | plumbing | E |
| computed withheld from client view 0 | input Emirates PERT Schedule.pdf · row 251 (Duration) 5 | 0 | 2025-10-04 | 0 | e251 | 0 | 0 | Temporary Lighting work | Construction | 2025-09-30 | 0 | general | J |
| computed withheld from client view 0 | input Emirates PERT Schedule.pdf · row 253 (Duration) 5 | 0 | 2025-10-23 | 0 | e253 | 0 | 0 | Conduit marking in closed room partitions | Construction | 2025-10-19 | 0 | partition | A |
| computed withheld from client view 0 | input Emirates PERT Schedule.pdf · row 254 (Duration) 10 | 0 | 2025-11-02 | 0 | e254 | 0 | 0 | Conduiting for Raw Power, UPS, lighting, IT | Construction | 2025-10-24 | 0 | electrical | C |
| computed withheld from client view 0 | input Emirates PERT Schedule.pdf · row 255 (Duration) 7 | 0 | 2025-11-04 | 0 | e255 | 0 | 0 | Back box fixing | Construction | 2025-10-29 | 0 | general | J |
| computed withheld from client view 0 | input Emirates PERT Schedule.pdf · row 256 (Duration) 12 | 0 | 2025-11-09 | 0 | e256 | 0 | 0 | Wiring for light circuits | Construction | 2025-10-29 | 0 | electrical | C |
| computed withheld from client view 0 | input Emirates PERT Schedule.pdf · row 257 (Duration) 12 | 0 | 2025-11-09 | 0 | e257 | 0 | 0 | Wiring for Power Circuits | Construction | 2025-10-29 | 0 | electrical | C |
| computed withheld from client view 0 | input Emirates PERT Schedule.pdf · row 259 (Duration) 6 | 0 | 2025-11-05 | 0 | e259 | 0 | 0 | Marking of floor raceway | Construction | 2025-10-31 | 0 | flooring | A |
| computed withheld from client view 0 | input Emirates PERT Schedule.pdf · row 260 (Duration) 7 | 0 | 2025-11-12 | 0 | e260 | 0 | 0 | Support fixing for raceway | Construction | 2025-11-06 | 0 | electrical | C |
| computed withheld from client view 0 | input Emirates PERT Schedule.pdf · row 263 (Duration) 3 | 0 | 2025-11-08 | 0 | e263 | 0 | 0 | Marking for ceiling cable tray | Construction | 2025-11-06 | 0 | ceiling | A |
| computed withheld from client view 0 | input Emirates PERT Schedule.pdf · row 264 (Duration) 10 | 0 | 2025-11-18 | 0 | e264 | 0 | 0 | Support fixing for cable tray | Construction | 2025-11-09 | 0 | electrical | C |
| computed withheld from client view 0 | input Emirates PERT Schedule.pdf · row 261 (Duration) 10 | 0 | 2025-11-22 | 0 | e261 | 0 | 0 | Installation of floor Raceway for Power & Data | Construction | 2025-11-13 | 0 | flooring | A |
| computed withheld from client view 0 | input Emirates PERT Schedule.pdf · row 265 (Duration) 14 | 0 | 2025-12-02 | 0 | e265 | 0 | 0 | Installation of cable tray for IT/Data/Electrical | Construction | 2025-11-19 | 0 | electrical | C |
| computed withheld from client view 0 | input Emirates PERT Schedule.pdf · row 262 (Duration) 7 | 0 | 2025-11-29 | 0 | e262 | 0 | 0 | Junction, GI Boxes Installation | Construction | 2025-11-23 | 0 | general | J |
| computed withheld from client view 0 | input Emirates PERT Schedule.pdf · row 267 (Duration) 15 | 0 | 2025-11-24 | 0 | e267 | 0 | 0 | Cabling for power | Construction | 2025-11-10 | 0 | general | J |
| computed withheld from client view 0 | input Emirates PERT Schedule.pdf · row 268 (Duration) 10 | 0 | 2025-12-04 | 0 | e268 | 0 | 0 | Cabling for earthing | Construction | 2025-11-25 | 0 | electrical | C |
| computed withheld from client view 0 | input Emirates PERT Schedule.pdf · row 269 (Duration) 7 | 0 | 2025-12-11 | 0 | e269 | 0 | 0 | Cabling dressing | Construction | 2025-12-05 | 0 | general | J |
| computed withheld from client view 0 | input Emirates PERT Schedule.pdf · row 271 (Duration) 7 | 0 | 2025-12-04 | 0 | e271 | 0 | 0 | Installation of DBs | Construction | 2025-11-28 | 0 | general | J |
| computed withheld from client view 0 | input Emirates PERT Schedule.pdf · row 272 (Duration) 5 | 0 | 2025-12-09 | 0 | e272 | 0 | 0 | DB Dressing and Termination | Construction | 2025-12-05 | 0 | electrical | C |
| computed withheld from client view 0 | input Emirates PERT Schedule.pdf · row 273 (Duration) 7 | 0 | 2025-12-31 | 0 | e273 | 0 | 0 | Delivery of LT Panels | Construction | 2025-12-25 | 0 | electrical | C |
| computed withheld from client view 0 | input Emirates PERT Schedule.pdf · row 274 (Duration) 7 | 0 | 2026-01-07 | 0 | e274 | 0 | 0 | Installation of LT Panels | Construction | 2026-01-01 | 0 | electrical | C |
| computed withheld from client view 0 | input Emirates PERT Schedule.pdf · row 275 (Duration) 3 | 0 | 2026-01-10 | 0 | e275 | 0 | 0 | Panel Testing and commissioning | Construction | 2026-01-08 | 0 | general | J |
| computed withheld from client view 0 | input Emirates PERT Schedule.pdf · row 278 (Duration) 7 | 0 | 2025-12-15 | 0 | e278 | 0 | 0 | Supply Of Battery | Construction | 2025-12-09 | 0 | electrical | C |
| computed withheld from client view 0 | input Emirates PERT Schedule.pdf · row 277 (Duration) 7 | 0 | 2026-01-14 | 0 | e277 | 0 | 0 | Supply Of Ups | Construction | 2026-01-08 | 0 | electrical | C |
| computed withheld from client view 0 | input Emirates PERT Schedule.pdf · row 279 (Duration) 5 | 0 | 2026-01-19 | 0 | e279 | 0 | 0 | Installation of UPS | Construction | 2026-01-15 | 0 | electrical | C |
| computed withheld from client view 0 | input Emirates PERT Schedule.pdf · row 280 (Duration) 5 | 0 | 2026-01-24 | 0 | e280 | 0 | 0 | Installation of Battery Systems | Construction | 2026-01-20 | 0 | electrical | C |
| computed withheld from client view 0 | input Emirates PERT Schedule.pdf · row 281 (Duration) 2 | 0 | 2026-01-21 | 0 | e281 | 0 | 0 | Testing & Commissioning of UPS | Construction | 2026-01-20 | 0 | electrical | C |
| computed withheld from client view 0 | input Emirates PERT Schedule.pdf · row 282 (Duration) 2 | 0 | 2026-01-26 | 0 | e282 | 0 | 0 | Testing & Commissioning of Battery | Construction | 2026-01-25 | 0 | electrical | C |
| computed withheld from client view 0 | input Emirates PERT Schedule.pdf · row 284 (Duration) 7 | 0 | 2026-02-11 | 0 | e284 | 0 | 0 | Installation of Switches, Raw Power Sockets | Construction | 2026-02-05 | 0 | electrical | C |
| computed withheld from client view 0 | input Emirates PERT Schedule.pdf · row 286 (Duration) 10 | 0 | 2026-01-24 | 0 | e286 | 0 | 0 | Installation of recessed lights in closed rooms | Construction | 2026-01-15 | 0 | general | J |
| computed withheld from client view 0 | input Emirates PERT Schedule.pdf · row 287 (Duration) 7 | 0 | 2026-01-21 | 0 | e287 | 0 | 0 | Installation of suspended light fixtures in w/s area | Construction | 2026-01-15 | 0 | electrical | C |
| computed withheld from client view 0 | input Emirates PERT Schedule.pdf · row 288 (Duration) 5 | 0 | 2026-01-19 | 0 | e288 | 0 | 0 | Installation of Decorative light fixtures | Construction | 2026-01-15 | 0 | electrical | C |
| computed withheld from client view 0 | input Emirates PERT Schedule.pdf · row 289 (Duration) 3 | 0 | 2026-01-24 | 0 | e289 | 0 | 0 | Testing & Commissioning of Electrical system | Construction | 2026-01-22 | 0 | electrical | C |
| computed withheld from client view 0 | input Emirates PERT Schedule.pdf · row 291 (Duration) 4 | 0 | 2025-11-03 | 0 | e291 | 0 | 0 | Marking & Support fixing of Ducts | Construction | 2025-10-31 | 0 | hvac | D |
| computed withheld from client view 0 | input Emirates PERT Schedule.pdf · row 292 (Duration) 10 | 0 | 2025-11-13 | 0 | e292 | 0 | 0 | Installation of Ducts | Construction | 2025-11-04 | 0 | hvac | D |
| computed withheld from client view 0 | input Emirates PERT Schedule.pdf · row 293 (Duration) 10 | 0 | 2025-11-23 | 0 | e293 | 0 | 0 | Insulation for ducts | Construction | 2025-11-14 | 0 | hvac | D |
| computed withheld from client view 0 | input Emirates PERT Schedule.pdf · row 294 (Duration) 7 | 0 | 2025-11-30 | 0 | e294 | 0 | 0 | Grills, Diffusers Installation | Construction | 2025-11-24 | 0 | hvac | D |
| computed withheld from client view 0 | input Emirates PERT Schedule.pdf · row 295 (Duration) 5 | 0 | 2025-12-05 | 0 | e295 | 0 | 0 | Installation of VAVs | Construction | 2025-12-01 | 0 | hvac | D |
| computed withheld from client view 0 | input Emirates PERT Schedule.pdf · row 296 (Duration) 30 | 0 | 2026-01-17 | 0 | e296 | 0 | 0 | Supply of AHU | Construction | 2025-12-19 | 0 | hvac | D |
| computed withheld from client view 0 | input Emirates PERT Schedule.pdf · row 297 (Duration) 10 | 0 | 2026-01-27 | 0 | e297 | 0 | 0 | Installation of AHU | Construction | 2026-01-18 | 0 | hvac | D |
| computed withheld from client view 0 | input Emirates PERT Schedule.pdf · row 298 (Duration) 10 | 0 | 2026-02-06 | 0 | e298 | 0 | 0 | Installation of fire Dampers, actuators | Construction | 2026-01-28 | 0 | hvac | D |

| crew | duration | ef | endDate | es | id | lf | ls | name | phase | startDate | totalFloat | trade | packageCode |
| --- | --- | --- | --- | --- | --- | --- | --- | --- | --- | --- | --- | --- | --- |
| computed withheld from client view 0 | input Emirates PERT Schedule.pdf · row 299 (Duration) 7 | 0 | 2026-02-13 | 0 | e299 | 0 | 0 | Acoustic insulation of AHU room | Construction | 2026-02-07 | 0 | hvac | D |
| computed withheld from client view 0 | input Emirates PERT Schedule.pdf · row 300 (Duration) 7 | 0 | 2026-02-13 | 0 | e300 | 0 | 0 | Fire damper control panels Installation | Construction | 2026-02-07 | 0 | hvac | D |
| computed withheld from client view 0 | input Emirates PERT Schedule.pdf · row 301 (Duration) 3 | 0 | 2026-02-16 | 0 | e301 | 0 | 0 | AHU dry run | Construction | 2026-02-14 | 0 | hvac | D |
| computed withheld from client view 0 | input Emirates PERT Schedule.pdf · row 303 (Duration) 7 | 0 | 2025-11-06 | 0 | e303 | 0 | 0 | Cable trays Installation for copper piping | Construction | 2025-10-31 | 0 | electrical | C |
| computed withheld from client view 0 | input Emirates PERT Schedule.pdf · row 304 (Duration) 10 | 0 | 2025-11-16 | 0 | e304 | 0 | 0 | Copper piping works | Construction | 2025-11-07 | 0 | general | J |
| computed withheld from client view 0 | input Emirates PERT Schedule.pdf · row 305 (Duration) 7 | 0 | 2025-11-23 | 0 | e305 | 0 | 0 | Drain Piping works | Construction | 2025-11-17 | 0 | general | J |
| computed withheld from client view 0 | input Emirates PERT Schedule.pdf · row 306 (Duration) 4 | 0 | 2025-11-20 | 0 | e306 | 0 | 0 | Installation of VRF units | Construction | 2025-11-17 | 0 | hvac | D |
| computed withheld from client view 0 | input Emirates PERT Schedule.pdf · row 307 (Duration) 3 | 0 | 2026-02-19 | 0 | e307 | 0 | 0 | Testing & Commissioning of HVAC system | Construction | 2026-02-17 | 0 | hvac | D |
| computed withheld from client view 0 | input Emirates PERT Schedule.pdf · row 309 (Duration) 15 | 0 | 2026-01-23 | 0 | e309 | 0 | 0 | Supply of Precision Air Conditioners | Construction | 2026-01-09 | 0 | hvac | D |
| computed withheld from client view 0 | input Emirates PERT Schedule.pdf · row 310 (Duration) 10 | 0 | 2026-02-02 | 0 | e310 | 0 | 0 | Installation of Precision Air Conditioners | Construction | 2026-01-24 | 0 | hvac | D |
| computed withheld from client view 0 | input Emirates PERT Schedule.pdf · row 313 (Duration) 4 | 0 | 2025-10-16 | 0 | e313 | 0 | 0 | Marking & supports fixing for fire pipes | Construction | 2025-10-13 | 0 | sprinkler | G |
| computed withheld from client view 0 | input Emirates PERT Schedule.pdf · row 314 (Duration) 10 | 0 | 2025-10-26 | 0 | e314 | 0 | 0 | Modification of existing fire pipes | Construction | 2025-10-17 | 0 | sprinkler | G |
| computed withheld from client view 0 | input Emirates PERT Schedule.pdf · row 315 (Duration) 5 | 0 | 2025-10-31 | 0 | e315 | 0 | 0 | Modification of existing sprinkler bulbs | Construction | 2025-10-27 | 0 | sprinkler | G |
| computed withheld from client view 0 | input Emirates PERT Schedule.pdf · row 316 (Duration) 10 | 0 | 2025-11-10 | 0 | e316 | 0 | 0 | Erection of MS sprinkler pipes | Construction | 2025-11-01 | 0 | sprinkler | G |
| computed withheld from client view 0 | input Emirates PERT Schedule.pdf · row 317 (Duration) 10 | 0 | 2025-11-20 | 0 | e317 | 0 | 0 | Enamel painting of pipes | Construction | 2025-11-11 | 0 | painting | A |
| computed withheld from client view 0 | input Emirates PERT Schedule.pdf · row 318 (Duration) 7 | 0 | 2025-11-17 | 0 | e318 | 0 | 0 | Flexible pipes installation for below false ceiling | Construction | 2025-11-11 | 0 | ceiling | A |
| computed withheld from client view 0 | input Emirates PERT Schedule.pdf · row 319 (Duration) 7 | 0 | 2025-11-24 | 0 | e319 | 0 | 0 | Pendent, Upright sprinkler bulbs installation | Construction | 2025-11-18 | 0 | sprinkler | G |
| computed withheld from client view 0 | input Emirates PERT Schedule.pdf · row 320 (Duration) 3 | 0 | 2025-11-27 | 0 | e320 | 0 | 0 | Testing & Commissioning of sprinkler system | Construction | 2025-11-25 | 0 | sprinkler | G |
| computed withheld from client view 0 | input Emirates PERT Schedule.pdf · row 322 (Duration) 20 | 0 | 2025-11-05 | 0 | e322 | 0 | 0 | FA Cabling on ceiling | Construction | 2025-10-17 | 0 | ceiling | A |
| computed withheld from client view 0 | input Emirates PERT Schedule.pdf · row 323 (Duration) 9 | 0 | 2025-11-14 | 0 | e323 | 0 | 0 | FA Cabling on walls/partitions | Construction | 2025-11-06 | 0 | partition | A |
| computed withheld from client view 0 | input Emirates PERT Schedule.pdf · row 324 (Duration) 14 | 0 | 2025-11-28 | 0 | e324 | 0 | 0 | Multi Sensor Detectors Installation | Construction | 2025-11-15 | 0 | general | J |
| computed withheld from client view 0 | input Emirates PERT Schedule.pdf · row 325 (Duration) 7 | 0 | 2025-12-05 | 0 | e325 | 0 | 0 | Heat detectors Installation | Construction | 2025-11-29 | 0 | general | J |
| computed withheld from client view 0 | input Emirates PERT Schedule.pdf · row 326 (Duration) 7 | 0 | 2025-12-12 | 0 | e326 | 0 | 0 | RI installation | Construction | 2025-12-06 | 0 | general | J |
| computed withheld from client view 0 | input Emirates PERT Schedule.pdf · row 327 (Duration) 7 | 0 | 2025-12-19 | 0 | e327 | 0 | 0 | Modules/MCP/Strobes Installation | Construction | 2025-12-13 | 0 | general | J |
| computed withheld from client view 0 | input Emirates PERT Schedule.pdf · row 328 (Duration) 15 | 0 | 2026-01-03 | 0 | e328 | 0 | 0 | Testing & Commissioning of FA system | Construction | 2025-12-20 | 0 | sprinkler | G |
| computed withheld from client view 0 | input Emirates PERT Schedule.pdf · row 330 (Duration) 20 | 0 | 2025-12-12 | 0 | e330 | 0 | 0 | PA cabling | Construction | 2025-11-23 | 0 | sprinkler | G |
| computed withheld from client view 0 | input Emirates PERT Schedule.pdf · row 331 (Duration) 7 | 0 | 2025-12-19 | 0 | e331 | 0 | 0 | Speakers Installation | Construction | 2025-12-13 | 0 | general | J |
| computed withheld from client view 0 | input Emirates PERT Schedule.pdf · row 332 (Duration) 4 | 0 | 2025-12-23 | 0 | e332 | 0 | 0 | Testing & Commissioning of PA system | Construction | 2025-12-20 | 0 | sprinkler | G |
| computed withheld from client view 0 | input Emirates PERT Schedule.pdf · row 334 (Duration) 10 | 0 | 2025-12-02 | 0 | e334 | 0 | 0 | Conduiting & Installation of raceways (ACS) | Construction | 2025-11-23 | 0 | electrical | C |
| computed withheld from client view 0 | input Emirates PERT Schedule.pdf · row 335 (Duration) 10 | 0 | 2025-12-12 | 0 | e335 | 0 | 0 | Cabling (ACS/CCTV) | Construction | 2025-12-03 | 0 | lv | F |
| computed withheld from client view 0 | input Emirates PERT Schedule.pdf · row 336 (Duration) 7 | 0 | 2025-12-19 | 0 | e336 | 0 | 0 | Installation of ACS & CCTV devices | Construction | 2025-12-13 | 0 | lv | F |
| computed withheld from client view 0 | input Emirates PERT Schedule.pdf · row 337 (Duration) 4 | 0 | 2025-12-23 | 0 | e337 | 0 | 0 | Testing and commisioning of ACS & CCTV works | Construction | 2025-12-20 | 0 | lv | F |
| computed withheld from client view 0 | input Emirates PERT Schedule.pdf · row 339 (Duration) 10 | 0 | 2025-12-21 | 0 | e339 | 0 | 0 | Conduiting & Installation of Raceway (WLD) | Construction | 2025-12-12 | 0 | electrical | C |
| computed withheld from client view 0 | input Emirates PERT Schedule.pdf · row 340 (Duration) 10 | 0 | 2025-12-31 | 0 | e340 | 0 | 0 | Cabling (WLD) | Construction | 2025-12-22 | 0 | lv | F |
| computed withheld from client view 0 | input Emirates PERT Schedule.pdf · row 341 (Duration) 7 | 0 | 2026-01-14 | 0 | e341 | 0 | 0 | Installation of WLD Devices | Construction | 2026-01-08 | 0 | lv | F |
| computed withheld from client view 0 | input Emirates PERT Schedule.pdf · row 342 (Duration) 2 | 0 | 2026-01-16 | 0 | e342 | 0 | 0 | Testing and commissioning of WLD System | Construction | 2026-01-15 | 0 | lv | F |
| computed withheld from client view 0 | input Emirates PERT Schedule.pdf · row 344 (Duration) 10 | 0 | 2025-12-21 | 0 | e344 | 0 | 0 | Conduiting & Installation of Raceway (Rodent) | Construction | 2025-12-12 | 0 | electrical | C |
| computed withheld from client view 0 | input Emirates PERT Schedule.pdf · row 345 (Duration) 7 | 0 | 2025-12-28 | 0 | e345 | 0 | 0 | Cabling (Rodent) | Construction | 2025-12-22 | 0 | lv | F |
| computed withheld from client view 0 | input Emirates PERT Schedule.pdf · row 346 (Duration) 5 | 0 | 2026-01-09 | 0 | e346 | 0 | 0 | Installation of Rodent Repelent Devices | Construction | 2026-01-05 | 0 | lv | F |
| computed withheld from client view 0 | input Emirates PERT Schedule.pdf · row 347 (Duration) 2 | 0 | 2026-01-11 | 0 | e347 | 0 | 0 | Testing and commissioning of Rodent Repelent System | Construction | 2026-01-10 | 0 | lv | F |
| computed withheld from client view 0 | input Emirates PERT Schedule.pdf · row 349 (Duration) 10 | 0 | 2025-12-21 | 0 | e349 | 0 | 0 | Supply of Gas Based Supression System | Construction | 2025-12-12 | 0 | general | J |
| computed withheld from client view 0 | input Emirates PERT Schedule.pdf · row 350 (Duration) 7 | 0 | 2026-01-12 | 0 | e350 | 0 | 0 | Installation of Gas Based Supression System | Construction | 2026-01-06 | 0 | general | J |
| computed withheld from client view 0 | input Emirates PERT Schedule.pdf · row 351 (Duration) 2 | 0 | 2026-01-14 | 0 | e351 | 0 | 0 | Testing and commissioning (gas suppression) | Construction | 2026-01-13 | 0 | sprinkler | G |
| computed withheld from client view 0 | input Emirates PERT Schedule.pdf · row 353 (Duration) 30 | 0 | 2025-11-23 | 0 | e353 | 0 | 0 | Cable laying | Construction | 2025-10-25 | 0 | general | J |
| computed withheld from client view 0 | input Emirates PERT Schedule.pdf · row 354 (Duration) 10 | 0 | 2026-02-04 | 0 | e354 | 0 | 0 | I/O port terminations | Construction | 2026-01-26 | 0 | general | J |
| computed withheld from client view 0 | input Emirates PERT Schedule.pdf · row 356 (Duration) 15 | 0 | 2026-01-08 | 0 | e356 | 0 | 0 | Supply of Fiber Cables | Construction | 2025-12-25 | 0 | general | J |
| computed withheld from client view 0 | input Emirates PERT Schedule.pdf · row 357 (Duration) 10 | 0 | 2026-01-18 | 0 | e357 | 0 | 0 | Supply of Backbone Cables | Construction | 2026-01-09 | 0 | general | J |
| computed withheld from client view 0 | input Emirates PERT Schedule.pdf · row 358 (Duration) 10 | 0 | 2026-01-18 | 0 | e358 | 0 | 0 | Supply of Network Racks | Construction | 2026-01-09 | 0 | lv | F |
| computed withheld from client view 0 | input Emirates PERT Schedule.pdf · row 359 (Duration) 10 | 0 | 2026-01-18 | 0 | e359 | 0 | 0 | Cables Installation | Construction | 2026-01-09 | 0 | general | J |
| computed withheld from client view 0 | input Emirates PERT Schedule.pdf · row 360 (Duration) 5 | 0 | 2026-01-23 | 0 | e360 | 0 | 0 | Server Room Readiness | Construction | 2026-01-19 | 0 | lv | F |
| computed withheld from client view 0 | input Emirates PERT Schedule.pdf · row 361 (Duration) 7 | 0 | 2026-01-25 | 0 | e361 | 0 | 0 | Network Rack Installation | Construction | 2026-01-19 | 0 | lv | F |
| computed withheld from client view 0 | input Emirates PERT Schedule.pdf · row 362 (Duration) 3 | 0 | 2026-01-28 | 0 | e362 | 0 | 0 | Testing and Commissioning (networking) | Construction | 2026-01-26 | 0 | lv | F |
| computed withheld from client view 0 | input Emirates PERT Schedule.pdf · row 364 (Duration) 10 | 0 | 2026-02-10 | 0 | e364 | 0 | 0 | AV Cabling | Construction | 2026-02-01 | 0 | lv | F |
| computed withheld from client view 0 | input Emirates PERT Schedule.pdf · row 365 (Duration) 5 | 0 | 2026-02-15 | 0 | e365 | 0 | 0 | AV Systems delivery | Construction | 2026-02-11 | 0 | lv | F |
| computed withheld from client view 0 | input Emirates PERT Schedule.pdf · row 366 (Duration) 5 | 0 | 2026-02-20 | 0 | e366 | 0 | 0 | AV Systems Installation | Construction | 2026-02-16 | 0 | lv | F |
| computed withheld from client view 0 | input Emirates PERT Schedule.pdf · row 368 (Duration) 2 | 0 | 2026-02-13 | 0 | e368 | 0 | 0 | Supply of White Goods | Construction | 2026-02-12 | 0 | general | J |
| computed withheld from client view 0 | input Emirates PERT Schedule.pdf · row 369 (Duration) 3 | 0 | 2026-02-20 | 0 | e369 | 0 | 0 | Installation of White Goods | Construction | 2026-02-18 | 0 | general | J |
| computed withheld from client view 0 | input Emirates PERT Schedule.pdf · row 371 (Duration) 4 | 0 | 2025-11-16 | 0 | e371 | 0 | 0 | Marking of workstations, meeting room tables | Construction | 2025-11-13 | 0 | carpentry | A |
| computed withheld from client view 0 | input Emirates PERT Schedule.pdf · row 372 (Duration) 25 | 0 | 2026-01-10 | 0 | e372 | 0 | 0 | Workstation frame, meeting room table installation | Construction | 2025-12-17 | 0 | carpentry | A |
| computed withheld from client view 0 | input Emirates PERT Schedule.pdf · row 373 (Duration) 15 | 0 | 2026-01-25 | 0 | e373 | 0 | 0 | Routing of power, data cables & socket fixing | Construction | 2026-01-11 | 0 | lv | F |
| computed withheld from client view 0 | input Emirates PERT Schedule.pdf · row 374 (Duration) 10 | 0 | 2026-02-04 | 0 | e374 | 0 | 0 | Fixing of table top, panels for workstations | Construction | 2026-01-26 | 0 | carpentry | A |
| computed withheld from client view 0 | input Emirates PERT Schedule.pdf · row 375 (Duration) 2 | 0 | 2026-02-06 | 0 | e375 | 0 | 0 | Alignment of workstations, meeting room tables | Construction | 2026-02-05 | 0 | carpentry | A |
| computed withheld from client view 0 | input Emirates PERT Schedule.pdf · row 377 (Duration) 3 | 0 | 2025-12-26 | 0 | e377 | 0 | 0 | Site Measurement for Modular Cubicle | Construction | 2025-12-24 | 0 | modular | B |
| computed withheld from client view 0 | input Emirates PERT Schedule.pdf · row 378 (Duration) 3 | 0 | 2025-12-29 | 0 | e378 | 0 | 0 | Cubicle Material Delivery | Construction | 2025-12-27 | 0 | modular | B |
| computed withheld from client view 0 | input Emirates PERT Schedule.pdf · row 379 (Duration) 20 | 0 | 2026-01-18 | 0 | e379 | 0 | 0 | Cubicle Installation | Construction | 2025-12-30 | 0 | modular | B |
| computed withheld from client view 0 | input Emirates PERT Schedule.pdf · row 381 (Duration) 10 | 0 | 2026-02-06 | 0 | e381 | 0 | 0 | Delivery of Loose furniture | Construction | 2026-01-28 | 0 | modular | B |
| computed withheld from client view 0 | input Emirates PERT Schedule.pdf · row 383 (Duration) 7 | 0 | 2026-02-05 | 0 | e383 | 0 | 0 | Supply & Installation of Lockers | Construction | 2026-01-30 | 0 | modular | B |
| computed withheld from client view 0 | input Emirates PERT Schedule.pdf · row 382 (Duration) 3 | 0 | 2026-02-09 | 0 | e382 | 0 | 0 | Installation of Loose furniture | Construction | 2026-02-07 | 0 | modular | B |
| computed withheld from client view 0 | input Emirates PERT Schedule.pdf · row 384 (Duration) 7 | 0 | 2026-02-19 | 0 | e384 | 0 | 0 | Supply of Chairs Materials | Construction | 2026-02-13 | 0 | modular | B |
| computed withheld from client view 0 | input Emirates PERT Schedule.pdf · row 385 (Duration) 7 | 0 | 2026-02-19 | 0 | e385 | 0 | 0 | Installation Chairs | Construction | 2026-02-13 | 0 | modular | B |

| crew | duration | ef | endDate | es | id | lf | ls | name | phase | startDate | totalFloat | trade | packageCode |
| --- | --- | --- | --- | --- | --- | --- | --- | --- | --- | --- | --- | --- | --- |
| computed withheld from client view 0 | input Emirates PERT Schedule.pdf · row 387 (Duration) 3 | 0 | 2026-02-07 | 0 | e387 | 0 | 0 | Signages Supply and Installation | Construction | 2026-02-05 | 0 | cleaning | J |
| computed withheld from client view 0 | input Emirates PERT Schedule.pdf · row 388 (Duration) 3 | 0 | 2026-02-19 | 0 | e388 | 0 | 0 | Branding (Logo) | Construction | 2026-02-17 | 0 | cleaning | J |
| computed withheld from client view 0 | input Emirates PERT Schedule.pdf · row 392 (Duration) 5 | 0 | 2026-02-22 | 0 | e392 | 0 | 0 | Deep Cleaning | Construction | 2026-02-18 | 0 | cleaning | J |
| computed withheld from client view 0 | input Emirates PERT Schedule.pdf · row 390 (Duration) 4 | 0 | 2026-02-22 | 0 | e390 | 0 | 0 | Fire exit signages Installation | Construction | 2026-02-19 | 0 | cleaning | J |
| computed withheld from client view 0 | input Emirates PERT Schedule.pdf · row 391 (Duration) 4 | 0 | 2026-02-22 | 0 | e391 | 0 | 0 | Fire evacuation maps Installation | Construction | 2026-02-19 | 0 | general | J |
| computed withheld from client view 0 | input Emirates PERT Schedule.pdf · row 389 (Duration) 3 | 0 | 2026-02-22 | 0 | e389 | 0 | 0 | Fire extinguishers Installation | Construction | 2026-02-20 | 0 | sprinkler | G |
